# 项目准备

Schedule from a web Gantt chart, 2025-05-20 to 2025-05-21.
Every day is a working day

## Schedule

| ID | WBS | Task | Duration | Start | Finish |
| --- | --- | --- | --- | --- | --- |
| 2 | 1 | 项目团队组建 | 2d | 2025-05-20 | 2025-05-21 |
| 3 | 2 | 开发需求沟通 | 1d | 2025-05-20 | 2025-05-20 |
